Schedule from MS Project, 2017-08-07 to 2017-11-09, A marks actual dates.

## Calendars

- 标准: Mon-Fri 08:00-12:00, 13:00-17:00; Sat-Sun off.

## Resources

| Resource |
| --- |
| 陈小桂 |
| 王大鹏 |
| 梁廷森 |
| 付陈林 |
| 文栎波 |
| 张籽娟 |
| 李凯 |
| 郭婷 |
| 杨建 |
| 买晨雨 |

## Schedule

| ID | WBS | Task | Type | Duration | Start | Finish | Predecessors | Complete | Remaining | Total slack | Deadline | Resources | Work | Actual work |
| --- | --- | --- | --- | --- | --- | --- | --- | --- | --- | --- | --- | --- | --- | --- |
| 1 | 1 | **会员系统开发** |  | 41d | 2017-08-15 A | 2017-10-10 |  | 96% | 1.54d | 0d |  |  | 808h | 784h |
| 2 | 1.1 | **业务功能开发** |  | 41d | 2017-08-15 A | 2017-10-10 |  | 96% | 1.58d | 0d |  |  | 584h | 568h |
| 3 | 1.1.1 | 储值购买反结算 | manual | 1d | 2017-08-15 A | 2017-08-15 A |  | 100% |  |  | 2017-08-15 | 陈小桂; 李凯 | 8h | 8h |
| 4 | 1.1.2 | 卡券购买反结算 | manual | 1d | 2017-08-16 A | 2017-08-16 A | 3 | 100% |  |  |  | 陈小桂 | 8h | 8h |
| 5 | 1.1.3 | 卡包购买反结算 | manual | 1d | 2017-08-17 A | 2017-08-17 A | 4 | 100% |  |  |  | 陈小桂 | 8h | 8h |
| 6 | 1.1.4 | 储值、卡券、卡包购买打印结算单 | manual | 2d | 2017-08-17 A | 2017-08-18 A |  | 100% |  |  |  | 张籽娟 | 16h | 16h |
| 7 | 1.1.5 | 结算不开票 | manual | 1d | 2017-08-18 A | 2017-08-18 A | 5 | 100% |  |  |  | 陈小桂 | 8h | 8h |
| 8 | 1.1.6 | **结算增加规则** |  | 4d | 2017-08-22 A | 2017-08-25 A | 7 | 100% |  |  |  | 陈小桂 | 88h | 88h |
| 9 | 1.1.6.1 | 结算完后会员升级(生成会员级别调整记录) | manual | 2d | 2017-08-22 A | 2017-08-23 A |  | 100% |  |  |  | 陈小桂 | 16h | 16h |
| 10 | 1.1.6.2 | **根据会员规则结算** |  | 2d | 2017-08-24 A | 2017-08-25 A |  | 100% |  |  |  | 陈小桂 | 40h | 40h |
| 11 | 1.1.6.2.1 | 结算时增加积分累计规则 | manual | 1d | 2017-08-24 A | 2017-08-24 A |  | 100% |  |  |  | 陈小桂 | 8h | 8h |
| 12 | 1.1.6.2.2 | 结算时增加积分抵现规则 | manual | 1d | 2017-08-25 A | 2017-08-25 A |  | 100% |  |  |  | 陈小桂 | 8h | 8h |
| 13 | 1.1.6.2.3 | 结算时增加优惠折扣策略 | manual | 1d | 2017-08-25 A | 2017-08-25 A |  | 100% |  |  |  | 陈小桂 | 8h | 8h |
| 14 | 1.1.7 | **购买规则处理** |  | 1d | 2017-08-24 A | 2017-08-24 A |  | 100% |  |  |  |  | 8h | 8h |
| 15 | 1.1.7.1 | 储值完后会员升级(生成会员级别调整记录) | manual | 1d | 2017-08-24 A | 2017-08-24 A |  | 100% |  |  |  | 陈小桂 | 8h | 8h |
| 16 | 1.1.8 | **操作界面改造** |  | 27d | 2017-08-15 A | 2017-09-20 A |  | 100% |  |  |  |  | 188h | 188h |
| 17 | 1.1.8.1 | 客户微信端--储值明细改造 | manual | 1d | 2017-08-30 A | 2017-08-30 A |  | 100% |  |  |  | 郭婷; 张籽娟 | 16h | 16h |
| 18 | 1.1.8.2 | 客户微信端--积分明细改造 | manual | 1d | 2017-08-31 A | 2017-08-31 A |  | 100% |  |  |  | 郭婷; 张籽娟 | 16h | 16h |
| 19 | 1.1.8.3 | 卡券界面改造 | manual | 3d | 2017-09-18 A | 2017-09-20 A |  | 100% |  |  |  | 郭婷; 李凯 | 48h | 48h |
| 20 | 1.1.8.4 | 后台添加临时会员 | manual | 1d | 2017-08-15 A | 2017-08-15 A |  | 100% |  |  |  | 梁廷森 | 8h | 8h |
| 21 | 1.1.8.5 | 服务类型可多选处理 | manual | 2d | 2017-09-04 A | 2017-09-05 A |  | 100% |  |  |  | 陈小桂 | 16h | 16h |
| 22 | 1.1.8.6 | 新增活动方案(基础数据) | manual | 0.5d | 2017-09-05 A | 2017-09-05 A |  | 100% |  |  |  | 张籽娟 | 4h | 4h |
| 23 | 1.1.8.7 | 卡券设置调整 | manual | 0.5d | 2017-09-05 A | 2017-09-05 A |  | 100% |  |  |  | 张籽娟 | 4h | 4h |
| 24 | 1.1.8.8 | 会员储值设置调整 | manual | 0.5d | 2017-09-06 A | 2017-09-06 A |  | 100% |  |  |  | 张籽娟 | 4h | 4h |
| 25 | 1.1.8.9 | 会员套餐设置调整 | manual | 0.5d | 2017-09-06 A | 2017-09-06 A |  | 100% |  |  |  | 张籽娟 | 4h | 4h |
| 26 | 1.1.8.10 | 新增会员及临时会员的时候增加车主姓名及手机号字段 | manual | 0.5d | 2017-09-07 A | 2017-09-07 A |  | 100% |  |  |  | 梁廷森 | 4h | 4h |
| 27 | 1.1.8.11 | 增加是否同时消费处理 | manual | 1d | 2017-09-06 A | 2017-09-06 A |  | 100% |  |  |  | 陈小桂 | 8h | 8h |
| 28 | 1.1.8.12 | 卡券购买时---增加积分抵扣功能 | manual | 1d | 2017-09-07 A | 2017-09-07 A |  | 100% |  |  |  | 陈小桂 | 8h | 8h |
| 29 | 1.1.8.13 | 会员业务查看调整 | manual | 0.5d | 2017-09-07 A | 2017-09-07 A |  | 100% |  |  |  | 张籽娟 | 4h | 4h |
| 30 | 1.1.8.14 | 卡券销售记录调整 | manual | 0.5d | 2017-09-08 A | 2017-09-08 A |  | 100% |  |  |  | 张籽娟 | 4h | 4h |
| 31 | 1.1.8.15 | 卡券发放记录调整 | manual | 0.5d | 2017-09-08 A | 2017-09-08 A |  | 100% |  |  |  | 张籽娟 | 4h | 4h |
| 32 | 1.1.8.16 | 卡券使用记录调整 | manual | 0.5d | 2017-09-11 A | 2017-09-11 A |  | 100% |  |  |  | 张籽娟 | 4h | 4h |
| 33 | 1.1.8.17 | 卡包销售记录调整 | manual | 0.5d | 2017-09-11 A | 2017-09-11 A |  | 100% |  |  |  | 张籽娟 | 4h | 4h |
| 34 | 1.1.8.18 | 会员储值记录调整 | manual | 0.5d | 2017-09-06 A | 2017-09-06 A |  | 100% |  |  |  | 李凯 | 4h | 4h |
| 35 | 1.1.8.19 | 会员购买记录调整 | manual | 0.5d | 2017-09-06 A | 2017-09-06 A |  | 100% |  |  |  | 李凯 | 4h | 4h |
| 36 | 1.1.8.20 | 会员储值记录调整 | manual | 0.5d | 2017-09-07 A | 2017-09-07 A |  | 100% |  |  |  | 李凯 | 4h | 4h |
| 37 | 1.1.8.21 | 会员消费记录调整 | manual | 0.5d | 2017-09-07 A | 2017-09-07 A |  | 100% |  |  |  | 李凯 | 4h | 4h |
| 38 | 1.1.8.22 | 会员扫码记录调整 | manual | 0.5d | 2017-09-08 A | 2017-09-08 A |  | 100% |  |  |  | 李凯 | 4h | 4h |
| 39 | 1.1.8.23 | 卡券PC端扫码记录调整 | manual | 0.5d | 2017-09-08 A | 2017-09-08 A |  | 100% |  |  |  | 李凯 | 4h | 4h |
| 40 | 1.1.8.24 | 会员冻结记录调整 | manual | 0.5d | 2017-09-11 A | 2017-09-11 A |  | 100% |  |  |  | 李凯 | 4h | 4h |

| ID | WBS | Task | Type | Duration | Start | Finish | Predecessors | Complete | Actual finish | Resources | Work | Actual work |
| --- | --- | --- | --- | --- | --- | --- | --- | --- | --- | --- | --- | --- |
| 41 | 1.1.9 | **储值、卡券、卡包 界面整合** |  | 5d | 2017-08-28 A | 2017-09-01 | 8 | 100% | 2017-10-10 | 陈小桂 | 112h | 112h |
| 42 | 1.1.9.1 | 确定菜单名称 | manual | 1d | 2017-09-14 A | 2017-09-14 A |  | 100% |  | 陈小桂 | 8h | 8h |
| 43 | 1.1.9.2 | 界面再细化一下 | manual | 1d | 2017-09-14 A | 2017-09-14 A |  | 100% |  | 陈小桂; 郭婷 | 16h | 16h |
| 44 | 1.1.9.3 | 界面测试 | manual | 1d | 2017-09-14 A | 2017-09-14 A |  | 100% |  | 陈小桂 | 8h | 8h |
| 45 | 1.1.9.4 | 整合购买撤销 | manual | 1d | 2017-09-15 A | 2017-09-15 A |  | 100% |  | 陈小桂 | 8h | 8h |
| 46 | 1.1.9.5 | 调整打印 | manual | 1d | 2017-09-15 A | 2017-09-15 A |  | 100% |  | 陈小桂 | 8h | 8h |
| 47 | 1.1.9.6 | 卡券购买增加搜索功能 | manual | 1d | 2017-09-25 A | 2017-09-25 A |  | 100% |  | 陈小桂 | 8h | 8h |
| 48 | 1.1.9.7 | 卡券购买增加活动方案过滤 | manual | 1d | 2017-10-09 A | 2017-10-09 A |  | 100% |  | 陈小桂 | 8h | 8h |
| 49 | 1.1.9.8 | 储值购买增加活动过滤 | manual | 1d | 2017-10-10 A | 2017-10-10 A |  | 100% |  | 陈小桂 | 8h | 8h |
| 50 | 1.1.10 | **费用类型可多选处理** |  | 3d | 2017-09-18 A | 2017-09-20 A |  | 100% |  | 陈小桂 | 48h | 48h |
| 51 | 1.1.10.1 | 关闭自动结算 | manual | 1d | 2017-09-18 A | 2017-09-18 A |  | 100% |  | 陈小桂 | 8h | 8h |
| 52 | 1.1.10.2 | 卡券基础信息调整-增加服用类型多选功能 | manual | 0.5d | 2017-09-19 A | 2017-09-19 A |  | 100% |  | 陈小桂 | 4h | 4h |
| 53 | 1.1.10.3 | 会员储值设置-费用类型多选 | manual | 0.5d | 2017-09-19 A | 2017-09-19 A |  | 100% |  | 陈小桂 | 4h | 4h |
| 54 | 1.1.10.4 | 结算是对费用类型多选进行处理 | manual | 1d | 2017-09-20 A | 2017-09-20 A |  | 100% |  | 陈小桂 | 8h | 8h |
| 55 | 1.1.11 | **会员模块字段增加** |  | 1d | 2017-09-05 A | 2017-09-05 |  | 100% | 2017-10-10 | 梁廷森 | 76h | 76h |
| 56 | 1.1.11.1 | 与文芳确定字段项（微信端、管理后台） | manual | 1d | 2017-09-18 A | 2017-09-18 A |  | 100% |  | 梁廷森 | 8h | 8h |
| 57 | 1.1.11.2 | 对字段进行增加 | manual | 1d | 2017-09-26 A | 2017-09-26 A |  | 100% |  | 梁廷森 | 8h | 8h |
| 58 | 1.1.11.3 | 会员详情---基础信息 | manual | 0.5d | 2017-09-26 A | 2017-09-26 A |  | 100% |  | 梁廷森 | 4h | 4h |
| 59 | 1.1.11.4 | 会员详情--车辆信息 | manual | 0.5d | 2017-09-26 A | 2017-09-26 A |  | 100% |  | 梁廷森 | 4h | 4h |
| 60 | 1.1.11.5 | 会员详情---积分信息 | manual | 1d | 2017-09-05 A | 2017-09-05 A |  | 100% |  | 张籽娟 | 8h | 8h |
| 61 | 1.1.11.6 | 会员详情--卡券信息 | manual | 1d | 2017-09-05 A | 2017-09-05 A |  | 100% |  | 张籽娟 | 8h | 8h |
| 62 | 1.1.11.7 | 会员详情--储值信息 | manual | 0.5d | 2017-09-19 A | 2017-09-19 A |  | 100% |  | 张籽娟 | 4h | 4h |
| 63 | 1.1.11.8 | 会员详情--购买记录 | manual | 1d | 2017-09-05 A | 2017-09-05 A |  | 100% |  | 张籽娟 | 8h | 8h |
| 64 | 1.1.11.9 | 会员详情--高级查询 | manual | 2d | 2017-10-09 A | 2017-10-10 A |  | 100% |  | 张籽娟 | 16h | 16h |

| ID | WBS | Task | Type | Duration | Start | Finish | Complete | Remaining | Total slack | Resources | Work | Actual work |
| --- | --- | --- | --- | --- | --- | --- | --- | --- | --- | --- | --- | --- |
| 65 | 1.1.12 | **运通汇个人中心调整** |  | 2d | 2017-09-27 | 2017-09-28 |  |  | 0d |  | 16h |  |
| 66 | 1.1.12.1 | 个人中心接口的开发 | manual | 0.5d | 2017-09-27 | 2017-09-27 |  |  |  | 梁廷森 | 4h |  |
| 67 | 1.1.12.2 | 个人中心界面对接 | manual | 0.5d | 2017-09-28 | 2017-09-28 |  |  |  | 梁廷森 | 4h |  |
| 68 | 1.1.12.3 | 调试测试 | manual | 1d | 2017-09-28 | 2017-09-28 |  |  |  | 梁廷森 | 8h |  |
| 69 | 1.2 | **消费结账调整** |  | 5d | 2017-09-21 A | 2017-09-27 A | 100% |  |  |  | 72h | 72h |
| 70 | 1.2.1 | 增加服务顾问添加消费结账 | manual | 3d | 2017-09-21 A | 2017-09-25 A | 100% |  |  | 陈小桂 | 24h | 24h |
| 71 | 1.2.2 | 消费结账，在削减卡券时，需要能看到该卡券对应的活动时那个，便于收银削减，店内客户会对削减那个卡券有要求（统一卡券名称，不同活动）。 | manual | 1d | 2017-09-26 A | 2017-09-26 A | 100% |  |  | 陈小桂 | 8h | 8h |
| 72 | 1.2.3 | 消费结账时，要显示卡卷的剩余可用次数。 | manual | 1d | 2017-09-26 A | 2017-09-26 A | 100% |  |  | 陈小桂 | 8h | 8h |
| 73 | 1.2.4 | 消费结账时，抵用金额输入框太短，如果输入4位数，将显示不全，而且不能用鼠标拉选里面的金额。 | manual | 1d | 2017-09-26 A | 2017-09-26 A | 100% |  |  | 陈小桂 | 8h | 8h |
| 74 | 1.2.5 | 财务确认消费结账 | manual | 1d | 2017-09-26 A | 2017-09-26 A | 100% |  |  | 陈小桂 | 8h | 8h |
| 75 | 1.2.6 | 财务撤回操作 | manual | 1d | 2017-09-27 A | 2017-09-27 A | 100% |  |  | 陈小桂 | 8h | 8h |
| 76 | 1.2.7 | 调整结算打印功能 | manual | 1d | 2017-09-27 A | 2017-09-27 A | 100% |  |  | 陈小桂 | 8h | 8h |
| 77 | 1.3 | **规则定时任务** |  | 34d | 2017-08-15 A | 2017-09-30 | 95% | 1.79d | 0d |  | 152h | 144h |
| 78 | 1.3.1 | 会员卡券过期更新 | manual | 1d | 2017-08-15 A | 2017-08-15 A | 100% |  |  | 王大鹏 | 8h | 8h |
| 79 | 1.3.2 | 会员积分过期更新 | manual | 1d | 2017-08-15 A | 2017-08-15 A | 100% |  |  | 王大鹏 | 8h | 8h |
| 80 | 1.3.3 | 会员储值过期更新 | manual | 1d | 2017-08-15 A | 2017-08-15 A | 100% |  |  | 王大鹏 | 8h | 8h |
| 81 | 1.3.4 | 会员升级定时任务 | manual | 1d | 2017-08-15 A | 2017-08-15 A | 100% |  |  | 王大鹏 | 8h | 8h |
| 82 | 1.3.5 | 会员降级定时任务 | manual | 1d | 2017-08-15 A | 2017-08-15 A | 100% |  |  | 王大鹏 | 8h | 8h |
| 83 | 1.3.6 | 会员权益定时任务 | manual | 1d | 2017-08-15 A | 2017-08-15 A | 100% |  |  | 王大鹏 | 8h | 8h |
| 84 | 1.3.7 | 会员卡券到期提醒 | manual | 1d | 2017-08-15 A | 2017-08-15 A | 100% |  |  | 王大鹏 | 8h | 8h |
| 85 | 1.3.8 | 会员积分到期提醒 | manual | 1d | 2017-08-15 A | 2017-08-15 A | 100% |  |  | 王大鹏 | 8h | 8h |
| 86 | 1.3.9 | 会员生日到期提醒 | manual | 1d | 2017-08-15 A | 2017-08-15 A | 100% |  |  | 王大鹏 | 8h | 8h |
| 87 | 1.3.10 | 会员储值到期提醒 | manual | 1d | 2017-08-15 A | 2017-08-15 A | 100% |  |  | 王大鹏 | 8h | 8h |
| 88 | 1.3.11 | 会员首保到期提醒 | manual | 1d | 2017-08-21 A | 2017-08-21 A | 100% |  |  | 王大鹏 | 8h | 8h |
| 89 | 1.3.12 | 会员保养到期提醒 | manual | 1d | 2017-08-21 A | 2017-08-21 A | 100% |  |  | 王大鹏 | 8h | 8h |
| 90 | 1.3.13 | 会员保险到期提醒 | manual | 1d | 2017-08-21 A | 2017-08-21 A | 100% |  |  | 王大鹏 | 8h | 8h |
| 91 | 1.3.14 | 驾照年审到期提醒 | manual | 1d | 2017-08-22 A | 2017-08-22 A | 100% |  |  | 王大鹏 | 8h | 8h |
| 92 | 1.3.15 | 车辆年检到期提醒 | manual | 1d | 2017-08-22 A | 2017-08-22 A | 100% |  |  | 王大鹏 | 8h | 8h |
| 93 | 1.3.16 | 会员购买提醒 | manual | 1d | 2017-09-30 A | 2017-09-30 A | 100% |  |  | 陈小桂 | 8h | 8h |
| 94 | 1.3.17 | 会员消费结账（问卷调查） | manual | 1d | 2017-09-30 | 2017-09-30 |  |  |  | 陈小桂 | 8h |  |
| 95 | 1.3.18 | 自定义天数提醒 | manual | 2d | 2017-09-05 A | 2017-09-06 A | 100% |  |  | 王大鹏 | 16h | 16h |

| ID | WBS | Task | Type | Duration | Start | Finish | Complete | Actual finish | Resources | Work | Actual work |
| --- | --- | --- | --- | --- | --- | --- | --- | --- | --- | --- | --- |
| 96 | 2 | **商周数据导入** |  | 1d | 2017-08-16 A | 2017-08-16 A | 100% |  |  | 32h | 32h |
| 97 | 2.1 | 北京博恩商周数据导入 | manual | 1d | 2017-08-16 A | 2017-08-16 A | 100% |  | 梁廷森 | 8h | 8h |
| 98 | 2.2 | 陕西瑞迪商周数据初始化导出 | manual | 0.5d | 2017-08-16 A | 2017-08-16 A | 100% |  | 梁廷森 | 4h | 4h |
| 99 | 2.3 | 陕西博宝商周数据初始化导出 | manual | 0.5d | 2017-08-16 A | 2017-08-16 A | 100% |  | 梁廷森 | 4h | 4h |
| 100 | 2.4 | 陕西瑞捷商周数据初始化导出 | manual | 0.5d | 2017-08-16 A | 2017-08-16 A | 100% |  | 梁廷森 | 4h | 4h |
| 101 | 2.5 | 陕西瑞迪商周数据核实导入 | manual | 0.5d | 2017-08-16 A | 2017-08-16 A | 100% |  | 梁廷森 | 4h | 4h |
| 102 | 2.6 | 陕西博宝商周数据核实导入 | manual | 0.5d | 2017-08-16 A | 2017-08-16 A | 100% |  | 梁廷森 | 4h | 4h |
| 103 | 2.7 | 陕西瑞捷商周数据核实导入 | manual | 0.5d | 2017-08-16 A | 2017-08-16 A | 100% |  | 梁廷森 | 4h | 4h |
| 104 | 3 | **业务报表开发** |  | 31d | 2017-09-11 A | 2017-10-23 A | 100% |  |  | 184h | 184h |
| 105 | 3.1 | **运通汇系统客服业务报表-经销店** |  | 17d | 2017-09-25 A | 2017-10-17 A | 100% |  |  | 104h | 104h |
| 106 | 3.1.1 | 会员积分分析-经销店客服 | manual | 2d | 2017-09-25 A | 2017-09-26 A | 100% |  | 张籽娟 | 16h | 16h |
| 107 | 3.1.2 | 会员消费记录-经销店客服 | manual | 2d | 2017-09-27 A | 2017-09-28 A | 100% |  | 张籽娟 | 16h | 16h |
| 108 | 3.1.3 | 会员信息分析-经销店客服 | manual | 2d | 2017-09-29 A | 2017-09-30 A | 100% |  | 张籽娟 | 16h | 16h |
| 109 | 3.1.4 | 会员售卖记录-经销店客服 | manual | 3d | 2017-10-09 A | 2017-10-11 A | 100% |  | 张籽娟 | 24h | 24h |
| 110 | 3.1.5 | 运通汇会员管理模块报表-集团及经销店共用 | manual | 4d | 2017-10-12 A | 2017-10-17 A | 100% |  | 张籽娟 | 32h | 32h |
| 111 | 3.2 | **运通汇报表-财务统计报表** |  | 1d | 2017-09-11 A | 2017-09-11 | 100% | 2017-10-23 |  | 80h | 80h |
| 112 | 3.2.1 | 会员权益列表 | manual | 5d | 2017-10-17 A | 2017-10-23 A | 100% |  | 张籽娟 | 40h | 40h |
| 113 | 3.2.2 | 会员权益统计 | manual | 3d | 2017-09-11 A | 2017-09-13 A | 100% |  | 张籽娟 | 24h | 24h |
| 114 | 3.2.3 | 运通汇会员管理模块报表-财务统计 | manual | 2d | 2017-09-11 A | 2017-09-12 A | 100% |  | 梁廷森 | 16h | 16h |
| 115 | 4 | **云之家轻应用开发** |  | 32d | 2017-08-07 A | 2017-09-19 A | 100% |  |  | 260h | 260h |
| 116 | 4.1 | 投诉建议应用开发 | manual | 5d | 2017-08-07 A | 2017-08-11 A | 100% |  |  |  |  |
| 117 | 4.2 | **开票信息应用开发** |  | 6d | 2017-08-16 A | 2017-08-23 A | 100% |  | 李凯 | 120h | 120h |
| 118 | 4.2.1 | 接口开发 | manual | 2d | 2017-08-16 A | 2017-08-17 A | 100% |  | 李凯 | 16h | 16h |
| 119 | 4.2.2 | 界面开发 | manual | 2d | 2017-08-18 A | 2017-08-21 A | 100% |  | 李凯; 郭婷 | 32h | 32h |
| 120 | 4.2.3 | 界面接口调试 | manual | 1d | 2017-08-22 A | 2017-08-22 A | 100% |  | 李凯; 郭婷 | 16h | 16h |
| 121 | 4.2.4 | 测试上线 | manual | 1d | 2017-08-23 A | 2017-08-23 A | 100% |  | 文栎波 | 8h | 8h |

| ID | WBS | Task | Type | Duration | Start | Finish | Complete | Remaining | Total slack | Resources | Work | Actual work |
| --- | --- | --- | --- | --- | --- | --- | --- | --- | --- | --- | --- | --- |
| 122 | 4.3 | **电子名片应用开发** |  | 26d | 2017-08-15 A | 2017-09-19 A | 100% |  |  |  | 140h | 140h |
| 123 | 4.3.1 | 接口开发 | manual | 2d | 2017-08-15 A | 2017-08-16 A | 100% |  |  | 李凯 | 16h | 16h |
| 124 | 4.3.2 | 界面开发 | manual | 1d | 2017-08-25 A | 2017-08-25 A | 100% |  |  | 郭婷 | 8h | 8h |
| 125 | 4.3.3 | 界面接口调试 | manual | 1d | 2017-08-28 A | 2017-08-28 A | 100% |  |  | 郭婷; 李凯 | 16h | 16h |
| 126 | 4.3.4 | 增加用户新增功能 | manual | 1d | 2017-09-04 A | 2017-09-04 A | 100% |  |  | 郭婷; 李凯 | 16h | 16h |
| 127 | 4.3.5 | 增加审批处理 | manual | 1d | 2017-09-05 A | 2017-09-05 A | 100% |  |  | 李凯 | 8h | 8h |
| 128 | 4.3.6 | 测试上线 | manual | 1d | 2017-09-06 A | 2017-09-06 A | 100% |  |  | 文栎波; 郭婷; 李凯 | 24h | 24h |
| 129 | 4.3.7 | 图片切图接口 | manual | 0.5d | 2017-09-15 A | 2017-09-15 A | 100% |  |  | 李凯 | 4h | 4h |
| 130 | 4.3.8 | 切图测试 | manual | 0.5d | 2017-09-15 A | 2017-09-15 A | 100% |  |  | 郭婷; 李凯 | 8h | 8h |
| 131 | 4.3.9 | 切图及电子名片调整后上线 | manual | 1d | 2017-09-18 A | 2017-09-18 A | 100% |  |  | 郭婷; 李凯; 文栎波 | 24h | 24h |
| 132 | 4.3.10 | 通知行政（包括使用方法） | manual | 1d | 2017-09-19 A | 2017-09-19 A | 100% |  |  | 付陈林; 文栎波 | 16h | 16h |
| 133 | 4.4 | 审批消息列表展示 | manual | 1d | 2017-08-07 A | 2017-08-07 A | 100% |  |  |  |  |  |
| 134 | 4.5 | 云之家审批代办消息提醒 | manual | 1d | 2017-08-07 A | 2017-08-07 A | 100% |  |  |  |  |  |
| 135 | 5 | **bug修改** |  | 34d | 2017-08-15 A | 2017-09-30 | 82% | 6.09d | 0d |  | 260h | 220h |
| 136 | 5.1 | 温州欣奥会员导入 | manual | 1d | 2017-08-15 A | 2017-08-15 A | 100% |  |  | 梁廷森 | 8h | 8h |
| 137 | 5.2 | 重庆汇捷无限卡券显示为单次问题 | manual | 1d | 2017-08-21 A | 2017-08-21 A | 100% |  |  | 陈小桂 | 8h | 8h |
| 138 | 5.3 | 北京兴奥无法结算问题 | manual | 1d | 2017-08-21 A | 2017-08-21 A | 100% |  |  | 陈小桂 | 8h | 8h |
| 139 | 5.4 | 服务类型关闭 | manual | 1d | 2017-08-30 A | 2017-08-30 A | 100% |  |  | 张籽娟 | 8h | 8h |
| 140 | 5.5 | 条件参数，本次实付工时费,本次实付材料费、本次实付金额 | manual | 1d | 2017-08-29 A | 2017-08-29 A | 100% |  |  | 梁廷森 | 8h | 8h |
| 141 | 5.6 | 积分调整类型， 增加一个调整金额。 | manual | 1d | 2017-08-29 A | 2017-08-29 A | 100% |  |  | 李凯 | 8h | 8h |
| 142 | 5.7 | 积分抵现规则，修改名称 积分单次最高使用比例、积分抵现比例 | manual | 1d | 2017-08-28 A | 2017-08-28 A | 100% |  |  | 张籽娟 | 8h | 8h |
| 143 | 5.8 | 卡券设置 服务类型可多选、卡券分类可以修改 | manual | 2d | 2017-08-29 A | 2017-08-30 A | 100% |  |  | 张籽娟 | 16h | 16h |
| 144 | 5.9 | 会员套餐，卡券售卖价变更成为单张售卖价 | manual | 1d | 2017-08-28 A | 2017-08-28 A | 100% |  |  | 张籽娟 | 8h | 8h |
| 145 | 5.10 | 添加会员时。存在错别字，，为 | manual | 1d | 2017-08-28 A | 2017-08-28 A | 100% |  |  | 张籽娟 | 8h | 8h |
| 146 | 5.11 | 消费结账 默认已开票 | manual | 2d | 2017-08-28 A | 2017-08-29 A | 100% |  |  | 陈小桂 | 16h | 16h |
| 147 | 5.12 | (微信申请临时会员)客户在注册运通汇的时候 客户姓名和出生年月日都要输入两次 如果先输入了姓名和生日 再去绑定车辆的话 出来的界面就又要输入生日姓名，能否操作简化 | manual | 1d | 2017-08-15 A | 2017-08-15 A | 100% |  |  | 梁廷森 | 8h | 8h |
| 148 | 5.13 | （供应商扫码记录）第三方供应商扫码记录，是否可以在后面显示操作人；不然无法统计操作数量，扫码人 | manual | 1d | 2017-09-25 A | 2017-09-25 A | 100% |  |  | 李凯 | 8h | 8h |
| 149 | 5.14 | (会员消息模板)给客户发送提醒短信，设置好了，但是没有发送出去； | manual | 1d | 2017-08-15 A | 2017-08-15 A | 100% |  |  | 王大鹏 | 8h | 8h |
| 150 | 5.15 | (卡券设置)由于车主和会员注册人（用车人）有可能不是同一人，手机号也不一致，选择会员界面需要添加底盘号或车主姓名，以便快速准确找到客户 | manual | 1d | 2017-09-25 A | 2017-09-25 A | 100% |  |  | 陈小桂 | 8h | 8h |
| 151 | 5.16 | (会员管理条件参数)需要添加两个条件参数，“近一年消费金额”、“累计消费金额”、“服务类别”——（保养、维修、事故理赔、索赔、首保、召回、其他） | manual | 1d | 2017-08-15 A | 2017-08-15 A | 100% |  |  | 付陈林 | 8h | 8h |
| 152 | 5.17 | 1、运通生活：活动管理状态，招募中和活动中所显示的活动不全2、活动上传时的限制人数，只能填写人数和选择不限制，不能空白。3、活动费用，如果是0元，选择免费，不允许写0元，客户支付不了。 | manual | 1d | 2017-09-30 | 2017-09-30 |  |  |  | 梁廷森 | 8h |  |
| 153 | 5.18 | 卡券购买 餐券和洗浴券消积分后，增加此单据打印 | manual | 0.5d | 2017-09-26 A | 2017-09-26 A | 100% |  |  | 李凯 | 4h | 4h |
| 154 | 5.19 | 在设置套餐时无法选择到正确的卡券，能否改为，在设置套餐时，选择活动后，就只能选择到该活动下的卡券 | manual | 1d | 2017-09-27 A | 2017-09-27 A | 100% |  |  | 李凯 | 8h | 8h |
| 155 | 5.20 | 套餐审批时，财务审批人员，无法看到套餐内卡券的具体信息，无法确定卡券是否设置准确，能否改为，在套餐审批时，可以打开套餐内卡券详情卡看。 | manual | 1d | 2017-09-27 A | 2017-09-27 A | 100% |  |  | 李凯 | 8h | 8h |
| 156 | 5.21 | 卡券附件挂在，修改到活动里，只作为一次附件上传，并与卡券，套餐进行关联。 | manual | 1d | 2017-09-28 A | 2017-09-28 A | 100% |  |  | 陈小桂 | 8h | 8h |
| 157 | 5.22 | 短信发送记录能否做个分页显示？目前这个一次显示全部信息，直接会让浏览器卡死。 | manual | 1d | 2017-09-28 A | 2017-09-28 A | 100% |  |  | 李凯 | 8h | 8h |
| 158 | 5.23 | 卡券、储值、会员套餐统一修改方案（与小桂进行沟通后在进行） | manual | 1d | 2017-09-29 A | 2017-09-29 A | 100% |  |  | 李凯 | 8h | 8h |
| 159 | 5.24 | 会员业务里，服务顾问，销售顾问需要查看客户权益，需要精简服务顾问和销售顾问查看到的内容，改为只可以查询查看单条客户记录，不能全部查看。 | manual | 1d | 2017-09-29 A | 2017-09-29 A | 100% |  |  | 陈小桂 | 8h | 8h |
| 160 | 5.25 | 已经切换新会员系统店，客户会员卡不再显示商周会员卡信息，只显示新会员系统会员卡。避免客户可以查看到商周会员权益，产生误会。 | manual | 1d | 2017-09-30 A | 2017-09-30 A | 100% |  |  | 梁廷森 | 8h | 8h |
| 161 | 5.26 | 系统内，所有分页处均添加首页和尾页按钮。 | manual | 1d | 2017-09-30 A | 2017-09-30 A | 100% |  |  | 李凯 | 8h | 8h |
| 162 | 5.27 | 微信文章，编辑文章时图片大小，控制在3M左右 | manual | 1d | 2017-08-15 | 2017-08-15 |  |  |  | 梁廷森 | 8h |  |
| 163 | 5.28 | 活动方案审批由店内提报内容，集团事业部、财务部审批流程，审批后，锁死活动方案、活动名称及内容，店内无修改权限 | manual | 1d | 2017-08-15 | 2017-08-15 |  |  |  | 李凯 | 8h |  |
| 164 | 5.29 | 同一个客户手机号24小时内只能提交预约一款试驾车系；即同一个客户一天可以预约试驾多款车，但是同一款车不能让客户重复提交订单。 | manual | 1d | 2017-08-15 | 2017-08-15 |  |  |  | 梁廷森 | 8h |  |
| 165 | 5.30 | 卡券与卡券之间的互斥。储值与储值之间互斥。 | manual | 1d | 2017-08-15 | 2017-08-15 |  |  |  | 张籽娟 | 8h |  |
| 166 | 5.31 | 针对开发常见问题的处理界面 | manual | 1d | 2017-08-15 A | 2017-08-15 A | 100% |  |  | 梁廷森 | 8h | 8h |
| 167 | 5.32 | 针对运维问题常见问题处理方式 | manual | 1d? | 2017-08-15 | 2017-08-15 |  |  |  |  |  |  |

| ID | WBS | Task | Type | Duration | Start | Finish | Predecessors | Complete | Remaining | Constraint | Resources | Work | Actual work |
| --- | --- | --- | --- | --- | --- | --- | --- | --- | --- | --- | --- | --- | --- |
| 168 | 6 | **高可用系统框架** |  | 8d | 2017-08-14 A | 2017-08-23 A |  | 100% |  |  |  | 120h | 120h |
| 169 | 6.1 | **方案整理** |  | 8d | 2017-08-14 A | 2017-08-23 A |  | 100% |  |  | 王大鹏 | 120h | 120h |
| 170 | 6.1.1 | 方案制定 | manual | 3d | 2017-08-14 A | 2017-08-16 A |  | 100% |  |  | 王大鹏 | 24h | 24h |
| 171 | 6.1.2 | 方案讨论 | manual | 1d | 2017-08-21 A | 2017-08-21 A |  | 100% |  |  | 付陈林; 王大鹏 | 16h | 16h |
| 172 | 6.1.3 | 方案确认 | manual | 1d | 2017-08-23 A | 2017-08-23 A |  | 100% |  |  | 付陈林; 王大鹏 | 16h | 16h |
| 173 | 6.2 | 方案实施 | manual | 1d | 2017-08-14 A | 2017-08-14 A |  | 100% |  |  |  |  |  |
| 174 | 7 | **财务系统开票明细** |  | 1d | 2017-08-16 | 2017-08-16 |  |  |  |  |  | 8h |  |
| 175 | 7.1 | DSM数据对接调研 | manual | 1d | 2017-08-16 | 2017-08-16 |  |  |  |  | 付陈林 | 8h |  |
| 176 | 8 | **商城系统开发** |  | 15d | 2017-09-06 A | 2017-09-26 |  | 36% | 9.58d |  |  | 208h | 132h |
| 177 | 8.1 | **商城需求调研** |  | 5d | 2017-09-06 A | 2017-09-12 A |  | 100% |  |  |  | 120h | 120h |
| 178 | 8.1.1 | 客服委员会需求调研 | manual | 3d | 2017-09-06 A | 2017-09-08 A | 179 | 100% |  | start no earlier than 2017-09-06 | 付陈林; 文栎波; 杨建 | 72h | 72h |
| 179 | 8.1.2 | 用品需求调研 | manual | 2d | 2017-09-11 A | 2017-09-12 A |  | 100% |  |  | 付陈林; 杨建; 文栎波 | 48h | 48h |
| 180 | 8.2 | **商城设计** |  | 6d | 2017-09-14 A | 2017-09-21 |  | 14% | 5.18d |  |  | 88h | 12h |
| 181 | 8.2.1 | 前端UI设计 | manual | 3d | 2017-09-14 | 2017-09-18 |  |  |  |  | 杨建 | 24h |  |
| 182 | 8.2.2 | 后台原型设计 | manual | 3d | 2017-09-14 A | 2017-09-18 |  | 50% | 1.5d |  | 付陈林 | 24h | 12h |
| 183 | 8.2.3 | 业务表结构设计 | manual | 2d | 2017-09-19 | 2017-09-20 |  |  |  |  | 付陈林 | 16h |  |
| 184 | 8.2.4 | 前端设计讨论确定 | manual | 1d | 2017-09-18 | 2017-09-18 |  |  |  |  | 杨建 | 8h |  |
| 185 | 8.2.5 | 后台原型设计讨论确定 | manual | 1d | 2017-09-21 | 2017-09-21 |  |  |  |  | 付陈林 | 8h |  |
| 186 | 8.2.6 | 业务表结构讨论确定 | manual | 1d | 2017-09-21 | 2017-09-21 |  |  |  |  | 付陈林 | 8h |  |
| 187 | 8.3 | 商城开发 | manual | 1d? | 2017-09-06 | 2017-09-06 |  |  |  |  |  |  |  |
| 188 | 8.4 | 商城测试上线 | manual | 1d? | 2017-09-06 | 2017-09-06 |  |  |  |  |  |  |  |
| 189 | 9 | **太平洋保险接口对接** |  | 25d | 2017-08-31 A | 2017-10-04 |  | 25% | 18.69d |  |  | 404h | 102h |
| 190 | 9.1 | 接口加密加签 | manual | 1d | 2017-08-31 A | 2017-08-31 A |  | 100% |  |  | 王大鹏 | 8h | 8h |
| 191 | 9.2 | 车型查询 | manual | 1d | 2017-09-01 A | 2017-09-01 A |  | 100% |  |  | 王大鹏 | 8h | 8h |
| 192 | 9.3 | 行业车型查询 | manual | 1d | 2017-09-04 A | 2017-09-04 A |  | 100% |  |  | 王大鹏 | 8h | 8h |
| 193 | 9.4 | 保费计算 | manual | 1.5d | 2017-09-07 A | 2017-09-08 A |  | 100% |  |  | 王大鹏 | 12h | 12h |
| 194 | 9.5 | 预核保提交 | manual | 1.5d | 2017-09-08 A | 2017-09-11 A |  | 100% |  |  | 王大鹏 | 12h | 12h |
| 195 | 9.6 | 核保提交 | manual | 1d | 2017-09-12 A | 2017-09-12 A |  | 100% |  |  | 王大鹏 | 8h | 8h |
| 196 | 9.7 | 提交两核 | manual | 1.5d | 2017-09-13 A | 2017-09-14 A |  | 100% |  |  | 王大鹏 | 12h | 12h |
| 197 | 9.8 | 支付申请 | manual | 2d | 2017-09-14 A | 2017-09-15 A |  | 100% |  |  | 王大鹏 | 16h | 16h |
| 198 | 9.9 | 精准报价PC端开发、报价api(多家保险公司)、报价api(一家保险公司) | manual | 10d | 2017-09-18 A | 2017-09-29 |  | 8% | 9.25d |  | 王大鹏 | 80h | 6h |
| 199 | 9.10 | 提交投保PC端开发、核保api(多家保险公司)、核保api(一家保险公司)、车辆出险信息api、核保结果回调api | manual | 15d | 2017-09-30 A | 2017-10-19 |  | 5% | 14.25d |  | 王大鹏 | 120h | 6h |
| 200 | 9.11 | 支付PC端开发、支付申请api、手工签发api、北京电子保单补发api、保单生效回调api、北京电子投保单短信确认接口api | manual | 15d | 2017-10-20 A | 2017-11-09 |  | 5% | 14.25d |  | 王大鹏 | 120h | 6h |

| ID | WBS | Task | Type | Duration | Start | Finish | Complete | Remaining | Resources | Work | Actual work |
| --- | --- | --- | --- | --- | --- | --- | --- | --- | --- | --- | --- |
| 201 | 10 | **校园招聘** |  | 1d | 2017-09-15 A | 2017-09-15 | 48% | 0.52d |  | 136h | 76h |
| 202 | 10.1 | UI设计 | manual | 2d | 2017-09-15 A | 2017-09-18 A | 100% |  | 买晨雨; 杨建 | 32h | 32h |
| 203 | 10.2 | 前两个界面前端设计 | manual | 2d | 2017-09-15 A | 2017-09-18 A | 100% |  | 文栎波 | 16h | 16h |
| 204 | 10.3 | 后三界面前端设计 | manual | 1.5d | 2017-09-19 A | 2017-09-20 A | 100% |  | 文栎波 | 12h | 12h |
| 205 | 10.4 | 校园招聘前端整体设计 | manual | 0.5d | 2017-09-20 A | 2017-09-20 A | 100% |  | 郭婷; 文栎波 | 8h | 8h |
| 206 | 10.5 | 整体流程测试 | manual | 1d | 2017-09-21 A | 2017-09-21 A | 100% |  | 郭婷 | 8h | 8h |
| 207 | 10.6 | 【微信运营】-图文素材管理的编辑器功能不全，不能调整字体大小，此处编辑器要求：跟微信公众号的编辑器功能一样，而且要好使(优化视频上传) | manual | 1d | 2017-10-09 | 2017-10-09 |  |  | 梁廷森 | 8h |  |
| 208 | 10.7 | 图文素材编辑---正文编辑框功能要与微信公众号平台一样，且从第三方平台编辑好的格式能直接复制过来（微信公众号具有此功能） | manual | 1d | 2017-10-10 | 2017-10-10 |  |  | 梁廷森 | 8h |  |
| 209 | 10.8 | 图文素材编辑---正文不能上传视频，正文里头一行不要出现封面图片 | manual | 0.5d | 2017-10-10 | 2017-10-10 |  |  | 梁廷森 | 4h |  |
| 210 | 10.9 | 图文素材编辑---开通音频功能，可在图文中添加音 | manual | 1d | 2017-10-11 | 2017-10-11 |  |  | 梁廷森 | 8h |  |
| 211 | 10.10 | 【微信运营】-自动回复-关键词回复：该功能不好使；此外，关键词需要能够完全匹配、不完全匹配 | manual | 1d | 2017-10-12 | 2017-10-12 |  |  | 梁廷森 | 8h |  |
| 212 | 10.11 | 图文素材编辑---开通留言功能，分为所有人员可留言、仅关注后可留言两种，以供粉丝在每一篇图文底部留言 | manual | 1d | 2017-09-15 | 2017-09-15 |  |  | 梁廷森 | 8h |  |
| 213 | 10.12 | 图文素材编辑---开通原创声明功能 | manual | 1d | 2017-09-15 | 2017-09-15 |  |  | 梁廷森 | 8h |  |
| 214 | 10.13 | 群发图文功能----群发图文功能有关的功能有：图文编辑、留言管理、图文分析 | manual | 1d | 2017-09-15 | 2017-09-15 |  |  | 梁廷森 | 8h |  |
